# MIS Projketni Plan

Schedule from MS Project, 2020-05-04 to 2023-01-24, costs in €.

## Calendars

- Standard: Mon-Fri 08:00-12:00, 13:00-17:00; Sat-Sun off.

## Resources

| Resource | Rate |
| --- | --- |
| ETF Researcher 1 | 11.88 |
| ETF Researcher 2 | 11.88 |
| ETF Expert 1 | 11.88 |
| ETF Expert 2 | 11.88 |
| IOM Researcher 1 | 15.62 |
| ELATEC Researcher 1 | 20.62 |
| ELATEC Administration 1 | 20.62 |
| UNHCR Researcher 1 | 17.5 |
| UNHCR Technician 1 | 17.5 |
| UNHCR Administration 1 | 17.5 |
| UNHCR Administration 2 | 17.5 |
| ELATEC Expert 1 | 20.62 |
| ELATEC Expert 2 | 20.62 |
| ELATEC Technician 1 | 20.62 |
| UPC Research 1 | 17.5 |
| UPC Expert 1 | 17.5 |
| UPC Technician 1 | 17.5 |
| UPC Administration 1 | 17.5 |
| SL Research 1 | 25.62 |
| SL Expert 1 | 25.62 |
| SL Technician 1 | 25.62 |
| SL Administration 1 | 25.62 |
| ETF Manager 1 | 11.88 |
| IOM Technician 1 | 15.62 |
| IOM Administration 1 | 15.62 |
| ELATEC Expert 3 | 20.62 |
| ELATEC Expert 4 | 20.62 |
| ELATEC Expert 6 | 20.62 |
| ELATEC Expert 5 | 20.62 |
| ELATEC Expert 7 | 20.62 |
| ELATEC Expert 8 | 20.62 |
| ELATEC Expert 9 | 20.62 |
| ELATEC Expert 10 | 20.62 |
| ELATEC Technician 2 | 20.62 |
| ELATEC Technician 3 | 20.62 |
| ELATEC Technician 4 | 20.62 |
| ELATEC Technician 5 | 20.62 |
| ELATEC Technician 6 | 20.62 |
| UPC Expert 2 | 17.5 |
| UPC Expert 3 | 17.5 |
| UPC Expert 4 | 17.5 |
| UPC Expert 5 | 17.5 |
| UPC Expert 6 | 17.5 |
| UPC Technician 2 | 17.5 |
| UPC Technician 3 | 17.5 |
| UPC Technician 4 | 17.5 |
| UPC Technician 5 | 17.5 |
| UPC Technician 6 | 17.5 |
| UPC Technician 7 | 17.5 |
| UPC Technician 8 | 17.5 |
| SL Expert 2 | 25.62 |
| SL Expert 3 | 25.62 |
| SL Expert 4 | 25.62 |
| SL Expert 5 | 25.62 |
| SL Expert 6 | 25.62 |
| SL Expert 7 | 25.62 |
| SL Technician 2 | 25.62 |
| SL Technician 3 | 25.62 |
| SL Technician 4 | 25.62 |
| SL Technician 5 | 25.62 |
| SL Technician 6 | 25.62 |
| SL Technician 7 | 25.62 |
| ETF Expert 3 | 11.88 |
| ETF Expert 4 | 11.88 |
| ETF Expert 5 | 11.88 |
| ETF Expert 6 | 11.88 |
| ETF Expert 7 | 11.88 |
| ETF Technician 1 | 11.88 |
| ETF Technician 2 | 11.88 |
| ETF Technician 3 | 11.88 |
| ETF Technician 4 | 11.88 |
| ETF Technician 5 | 11.88 |
| ETF Technician 6 | 11.88 |
| UNHCR Researcher 2 | 17.5 |
| UNHCR Researcher 3 | 17.5 |
| UNHCR Researcher 4 | 17.5 |
| IOM Researcher 2 | 15.62 |
| IOM Researcher 3 | 15.62 |
| IOM Researcher 4 | 15.62 |
| IOM Researcher 5 | 15.62 |
| ETF Manager 2 | 11.88 |
| ETF Manager 3 | 11.88 |
| ETF Manager 4 | 11.88 |
| ETF Manager 5 | 11.88 |
| ETF Manager 6 | 11.88 |
| ETF Manager 7 | 11.88 |
| ETF Manager 8 | 11.88 |
| ETF Manager 0 | 11.88 |
| IOM Administration 0 | 15.62 |
| ELATEC Administration 0 | 20.62 |
| UNHCR Administration 0 | 17.5 |
| UPC Administration 0 | 17.5 |
| SL Administration 0 | 25.62 |
| UNHCR Technician 2 | 17.5 |
| UNHCR Expert 1 | 17.5 |
| ETF Computer room | 10000 |
| ETF Server room | 20000 |
| ETF Licence for Statistical Analysis Software | 2985 |
| ETF License for Project Planning Software | 2500 |
| ETF License for Modeling Application | 4000 |
| ETF Hardware equipment | 9000 |
| ETF License of Software | 22500 |
| ETF Testing equipment | 1995 |
| ETF License for Testing Software | 1200 |
| ETF Advertisment material | 10000 |
| ETF Conferency Entry Passes | 5000 |
| ETF License for Microsoft Project | 5500 |
| External validation and control of system model | 4000 |
| External help with hardware development | 4000 |
| External help with hardware security testing | 3000 |
| External help with software security testing | 3000 |
| Advertisment videos | 2000 |
| ETF Travel expenses | 12120 |
| IOM Travel expenses | 22420 |
| ELATEC Travel expenses | 17910 |
| UNHCR Travel expenses | 24680 |
| UPC Travel expenses | 17560 |
| SL Travel expenses | 22360 |
| IOM Equipment expenses | 48715 |
| UNHCR Equipment expenses | 67860 |
| UPC Equipment expenses | 85320 |
| SL Equipment expenses | 77210 |
| ELATEC Computer room | 12000 |
| ELATEC License for Microsoft Project | 1500 |
| ELATEC License for Project Planning Software | 1500 |
| ELATEC License for Modeling Application | 6580 |
| ELATEC Hardware equipment | 18000 |
| ELATEC License for Software | 1352 |
| ELATEC License for Testing Software | 900 |
| ELATEC Server room |  |
| IOM Subcontracting | 25000 |
| UNHCR Subcontracting | 18000 |
| UPC Subcontracting | 14000 |
| SL Subcontracting | 32000 |

## Schedule

| ID | WBS | Task | Duration | Start | Finish | Predecessors | Total slack | Free slack | Resources | Work | Cost |
| --- | --- | --- | --- | --- | --- | --- | --- | --- | --- | --- | --- |
| 1 | 1 | **WP1 - Analiza tržišta i korisničkih zahteva** | 67d | 2020-05-04 | 2020-08-04 |  | 0d |  | ELATEC Computer room | 1088h | 29,870 |
| 2 | 1.1 | **Analiza tržišta** | 33d | 2020-05-04 | 2020-06-17 |  | 0d |  |  | 608h | 10,050 |
| 3 | 1.1.1 | **Iniciranje analize tržišta** | 4d | 2020-05-04 | 2020-05-07 |  | 0d |  |  | 80h | 1,340 |
| 4 | 1.1.1.1 | Selekcija ljudi koji će raditi analizu | 2d | 2020-05-04 | 2020-05-05 |  | 0d |  | ELATEC Administration 1; UNHCR Researcher 1 | 32h | 610 |
| 5 | 1.1.1.2 | Kratak opis posla | 2d | 2020-05-04 | 2020-05-05 |  | 0d |  | ETF Expert 1 | 16h | 190 |
| 6 | 1.1.1.3 | Raspodela izabranih u timove | 1d | 2020-05-06 | 2020-05-06 | 4, 5 | 0d |  | ELATEC Administration 1; UNHCR Technician 1 | 16h | 305 |
| 7 | 1.1.1.4 | Dokumentovanje aktivnosti | 1d | 2020-05-07 | 2020-05-07 | 6 | 0d |  | ETF Expert 2; UNHCR Technician 1 | 16h | 235 |
| 8 | 1.1.2 | **Planiranje analize tržišta** | 11d | 2020-05-08 | 2020-05-22 | 3 | 0d |  |  | 192h | 3,035 |
| 9 | 1.1.2.1 | Definisanje aktivnosti koje će se izvršiti u fazi realizacije | 3d | 2020-05-08 | 2020-05-12 |  | 0d |  | ETF Expert 1; IOM Researcher 1 | 48h | 660 |
| 10 | 1.1.2.2 | Podela aktivnosti po timovima | 1d | 2020-05-13 | 2020-05-13 | 9 | 0d |  | ELATEC Administration 1; UNHCR Administration 2 | 16h | 305 |
| 11 | 1.1.2.3 | **Priprema za analizu tržišta** | 5d | 2020-05-14 | 2020-05-20 |  | 0d |  |  | 96h | 1,460 |
| 12 | 1.1.2.3.1 | Nalaženje pouzdanih izvora informacija | 2d | 2020-05-14 | 2020-05-15 | 10 | 3d |  | ELATEC Researcher 1; UNHCR Researcher 1 | 32h | 610 |
| 13 | 1.1.2.3.2 | Pravljenje anketa | 3d | 2020-05-14 | 2020-05-18 | 10 | 0d |  | ETF Expert 2; IOM Researcher 1 | 48h | 660 |
| 14 | 1.1.2.3.3 | Instalacija i konfiguracija softvera za analizu prikupljenih podataka | 2d | 2020-05-19 | 2020-05-20 | 13 | 0d |  | ETF Expert 1 | 16h | 190 |
| 15 | 1.1.2.4 | Pisanje izveštaja o planiranju analize | 2d | 2020-05-21 | 2020-05-22 | 11 | 0d |  | ELATEC Administration 1; UNHCR Administration 2 | 32h | 610 |
| 16 | 1.1.3 | **Realizacija analize tržišta** | 16d | 2020-05-25 | 2020-06-15 | 8 | 0d |  |  | 304h | 5,155 |
| 17 | 1.1.3.1 | **Prikupljanje podataka** | 3d | 2020-05-25 | 2020-05-27 |  | 6d | 0d |  | 104h | 1,640 |
| 18 | 1.1.3.1.1 | Prikupljanje podataka o sličnim projektima | 3d | 2020-05-25 | 2020-05-27 |  | 6d |  | ETF Researcher 1; UNHCR Researcher 1 | 48h | 705 |
| 19 | 1.1.3.1.2 | Prikupljanje podataka sa odgovarajućih sajtova | 3d | 2020-05-25 | 2020-05-27 |  | 6d |  | ELATEC Researcher 1 | 24h | 495 |
| 20 | 1.1.3.1.3 | Formiranje ciljnih grupa | 2d | 2020-05-25 | 2020-05-26 |  | 7d |  | ETF Expert 2 | 16h | 190 |
| 21 | 1.1.3.1.4 | Intervjuisanje ciljnih grupa | 2d | 2020-05-25 | 2020-05-26 |  | 7d |  | IOM Researcher 1 | 16h | 250 |
| 22 | 1.1.3.2 | Analiziranje dobijenih podataka | 4d | 2020-05-28 | 2020-06-02 | 17 | 6d | 0d | IOM Researcher 1 | 32h | 500 |
| 23 | 1.1.3.3 | Pisanje izveštaja o tržištu | 1d | 2020-06-03 | 2020-06-03 | 22 | 6d | 0d | ELATEC Administration 1 | 8h | 165 |
| 24 | 1.1.3.4 | Pisanje studije izvodljivosti | 2d | 2020-06-04 | 2020-06-05 | 23 | 6d |  | ELATEC Researcher 1; UNHCR Researcher 1 | 32h | 610 |
| 25 | 1.1.3.5 | Praćenje napretka | 15d | 2020-05-25 | 2020-06-12 |  | 0d |  | UNHCR Administration 2 | 120h | 2,100 |
| 26 | 1.1.3.6 | Dokumentovanje aktivnosti | 1d | 2020-06-15 | 2020-06-15 | 25 | 0d |  | UNHCR Administration 2 | 8h | 140 |

| ID | WBS | Task | Duration | Start | Finish | Predecessors | Total slack | Resources | Work | Cost |
| --- | --- | --- | --- | --- | --- | --- | --- | --- | --- | --- |
| 27 | 1.1.4 | **Završetak analize tržišta** | 2d | 2020-06-16 | 2020-06-17 | 16 | 0d |  | 32h | 520 |
| 28 | 1.1.4.1 | Pisanje završnog izveštaja | 2d | 2020-06-16 | 2020-06-17 |  | 0d | ELATEC Researcher 1; ETF Expert 1 | 32h | 520 |
| 29 | 1.2 | **Analiza korisničkih zahteva** | 33d | 2020-06-18 | 2020-08-03 | 2 | 0d |  | 472h | 7,655 |
| 30 | 1.2.1 | **Iniciranje analize korisničkih zahteva** | 4d | 2020-06-18 | 2020-06-23 |  | 0d |  | 64h | 970 |
| 31 | 1.2.1.1 | Selekcija ljudi koji će raditi analizu | 2d | 2020-06-18 | 2020-06-19 |  | 0d | ELATEC Administration 1 | 16h | 330 |
| 32 | 1.2.1.2 | Kratak opis posla | 2d | 2020-06-18 | 2020-06-19 |  | 0d | ETF Expert 1; ETF Researcher 1 | 32h | 380 |
| 33 | 1.2.1.3 | Raspodela izabranih u timove | 1d | 2020-06-22 | 2020-06-22 | 31, 32 | 0d | ELATEC Administration 1 | 8h | 165 |
| 34 | 1.2.1.4 | Dokumentovanje aktivnosti | 1d | 2020-06-23 | 2020-06-23 | 33 | 0d | ETF Researcher 1 | 8h | 95 |
| 35 | 1.2.2 | **Planiranje analize korisničkih zahteva** | 9d | 2020-06-24 | 2020-07-06 | 30 | 0d |  | 72h | 1,125 |
| 36 | 1.2.2.1 | Definisanje aktivnosti koje će se izvršiti u fazi realizacije | 3d | 2020-06-24 | 2020-06-26 | 30 | 0d | ETF Researcher 1 | 24h | 285 |
| 37 | 1.2.2.2 | Podela aktivnosti po timovima | 1d | 2020-06-29 | 2020-06-29 | 36 | 0d | UNHCR Administration 2 | 8h | 140 |
| 38 | 1.2.2.3 | **Priprema za analizu korisničkih zahteva** | 4d | 2020-06-30 | 2020-07-03 |  | 0d |  | 32h | 560 |
| 39 | 1.2.2.3.1 | Pravljenje anketa | 2d | 2020-06-30 | 2020-07-01 | 37 | 0d | UNHCR Researcher 1 | 16h | 280 |
| 40 | 1.2.2.3.2 | Instalacija i konfiguracija softvera za analizu prikupljenih podataka | 2d | 2020-07-02 | 2020-07-03 | 39 | 0d | UNHCR Technician 1 | 16h | 280 |
| 41 | 1.2.2.4 | Pisanje izveštaja o planiranju analize | 1d | 2020-07-06 | 2020-07-06 | 38 | 0d | UNHCR Administration 2 | 8h | 140 |
| 42 | 1.2.3 | **Realizacija analize korisničkih zahteva** | 19d | 2020-07-07 | 2020-07-31 | 35 | 0d |  | 320h | 5,325 |
| 43 | 1.2.3.1 | Formiranje ciljnih grupa | 2d | 2020-07-07 | 2020-07-08 |  | 0d | ELATEC Researcher 1 | 16h | 330 |
| 44 | 1.2.3.2 | Nasumično izdvajanje ispitanika radi intervjuisanja | 1d | 2020-07-07 | 2020-07-07 |  | 1d | UNHCR Researcher 1 | 8h | 140 |
| 45 | 1.2.3.3 | **Prikupljanje korisničkih zahteva** | 7d | 2020-07-09 | 2020-07-17 | 43, 44 | 0d |  | 56h | 755 |
| 46 | 1.2.3.3.1 | Anketiranje ciljnih grupa | 3d | 2020-07-09 | 2020-07-13 |  | 0d | IOM Researcher 1 | 24h | 375 |
| 47 | 1.2.3.3.2 | Individualno intervjuisanje ispitanika | 2d | 2020-07-14 | 2020-07-15 | 46 | 0d | ETF Researcher 2 | 16h | 190 |
| 48 | 1.2.3.3.3 | Formiranje spiska korisničkih zahteva | 2d | 2020-07-16 | 2020-07-17 | 47 | 0d | ETF Researcher 2 | 16h | 190 |
| 49 | 1.2.3.4 | **Аnaliza korisničkih zahteva** | 8d | 2020-07-20 | 2020-07-29 | 45 | 0d |  | 104h | 1,810 |
| 50 | 1.2.3.4.1 | Analiza funkcionalnosti | 5d | 2020-07-20 | 2020-07-24 |  | 0d | ELATEC Administration 1; UNHCR Technician 1 | 80h | 1,525 |
| 51 | 1.2.3.4.2 | Pisanje scenarija slučajeva korišćenja | 3d | 2020-07-27 | 2020-07-29 | 50 | 0d | ETF Expert 1 | 24h | 285 |
| 52 | 1.2.3.5 | Kreiranje izveštaja | 2d | 2020-07-30 | 2020-07-31 | 49 | 0d | ETF Researcher 2 | 16h | 190 |
| 53 | 1.2.3.6 | Praćenje napretka | 15d | 2020-07-07 | 2020-07-27 |  | 4d | UNHCR Administration 2 | 120h | 2,100 |

| ID | WBS | Task | Type | Duration | Start | Finish | Predecessors | Total slack | Resources | Work | Cost |
| --- | --- | --- | --- | --- | --- | --- | --- | --- | --- | --- | --- |
| 54 | 1.2.4 | **Završetak analize korisničkih zahteva** |  | 1d | 2020-08-03 | 2020-08-03 | 42 | 0d |  | 16h | 235 |
| 55 | 1.2.4.1 | Pisanje završnog izveštaja |  | 1d | 2020-08-03 | 2020-08-03 |  | 0d | ETF Expert 2; UNHCR Administration 1 | 16h | 235 |
| 56 | 1.3 | Dobijanje odobrenja od menadžmenta |  | 1d | 2020-08-04 | 2020-08-04 | 2, 29 | 0d | ELATEC Administration 1 | 8h | 165 |
| 57 | 2 | M1 - Završena analiza tržišta i svih korisničkih zahteva | milestone | 0d | 2020-08-04 | 2020-08-04 | 1 | 0d | ETF Expert 1 [70%] |  |  |
| 58 | 3 | **WP2 - Planiranje projekta** |  | 107d | 2020-08-05 | 2020-12-31 | 57 | 0d | ELATEC License for Microsoft Project; ELATEC License for Project Planning Software | 1936h | 40,435 |
| 59 | 3.1 | **Pravljenje i organizacija rasporeda** |  | 27d | 2020-08-05 | 2020-09-10 |  | 0d |  | 432h | 8,480 |
| 60 | 3.1.1 | Definisanje zadataka, obima posla |  | 14d | 2020-08-05 | 2020-08-24 |  | 0d | SL Research 1; UPC Research 1 | 224h | 4,830 |
| 61 | 3.1.2 | Procena trajanja projektnih faza |  | 7d | 2020-08-25 | 2020-09-02 | 60 | 0d | ELATEC Researcher 1; ETF Researcher 2 | 112h | 1,820 |
| 62 | 3.1.3 | Vremenski rasporediti faze, zadatke |  | 6d | 2020-09-03 | 2020-09-10 | 61 | 0d | ELATEC Administration 1; UPC Research 1 | 96h | 1,830 |
| 63 | 3.2 | **Planiranje resursa** |  | 17d | 2020-09-11 | 2020-10-05 | 59 | 0d |  | 216h | 3,785 |
| 64 | 3.2.1 | Određivanje broja radnika |  | 7d | 2020-09-11 | 2020-09-21 |  | 0d | SL Administration 1 | 56h | 1,435 |
| 65 | 3.2.2 | Određivanje zahteva za opremom |  | 10d | 2020-09-22 | 2020-10-05 | 64 | 0d | ETF Expert 1; UPC Technician 1 | 160h | 2,350 |
| 66 | 3.3 | **Planiranje budzeta** |  | 25d | 2020-10-06 | 2020-11-09 | 63 | 0d |  | 520h | 10,225 |
| 67 | 3.3.1 | Određivanje plata |  | 6d | 2020-10-06 | 2020-10-13 |  | 0d | ELATEC Administration 1; IOM Researcher 1; SL Administration 1 | 144h | 2,970 |
| 68 | 3.3.2 | Određivanje troškova za opremu |  | 8d | 2020-10-14 | 2020-10-23 | 67 | 0d | IOM Researcher 1; SL Technician 1; UPC Administration 1 [50%]; UPC Expert 1 [50%]; UPC Research 1 [50%] | 224h | 4,320 |
| 69 | 3.3.3 | Određivanje ostalih troškova |  | 8d | 2020-10-26 | 2020-11-04 | 68 | 0d | ELATEC Technician 1; UPC Technician 1 | 128h | 2,440 |
| 70 | 3.3.4 | Revizija i sumiranje troškova |  | 3d | 2020-11-05 | 2020-11-09 | 69 | 0d | ELATEC Expert 1 | 24h | 495 |
| 71 | 3.4 | Planiranje rizika |  | 10d | 2020-11-10 | 2020-11-23 | 66 | 0d | ELATEC Researcher 1; IOM Researcher 1 [50%]; SL Administration 1; UPC Research 1 | 280h | 5,725 |
| 72 | 3.5 | Raspodela posla po participantima |  | 4d | 2020-11-24 | 2020-11-27 | 71 | 0d | ELATEC Administration 1; SL Administration 1 | 64h | 1,480 |
| 73 | 3.6 | Definisanje načina komunikacije |  | 6d | 2020-11-30 | 2020-12-07 | 72 | 0d | UPC Expert 1 | 48h | 840 |
| 74 | 3.7 | Definisanje mera kvaliteta i performansi |  | 12d | 2020-12-08 | 2020-12-23 | 73 | 0d | ETF Expert 1; SL Technician 1; UPC Expert 1 | 288h | 5,280 |
| 75 | 3.8 | Dokumentovati projektni plan |  | 5d | 2020-12-24 | 2020-12-30 | 74 | 0d | ELATEC Researcher 1; UPC Research 1 | 80h | 1,525 |
| 76 | 3.9 | Dobijanje odobrenja od menadžmenta |  | 1d | 2020-12-31 | 2020-12-31 | 75 | 0d | ETF Researcher 1 | 8h | 95 |
| 77 | 4 | M2 - Završen plan projekta | milestone | 0d | 2020-12-31 | 2020-12-31 | 76 | 0d | ELATEC Technician 1 |  |  |

| ID | WBS | Task | Type | Duration | Start | Finish | Predecessors | Total slack | Free slack | Resources | Work | Cost |
| --- | --- | --- | --- | --- | --- | --- | --- | --- | --- | --- | --- | --- |
| 78 | 5 | **WP3 - Modelovanje arhitekture i dizajn sistema** |  | 105d | 2021-01-01 | 2021-05-27 | 77 | 0d |  | ETF License for Modeling Application; External validation and control of system model; ELATEC Hardware equipment; ELATEC License for Modeling Application | 2188h | 70,232.5 |
| 79 | 5.1 | **Modelovanje i dizajn veb-portala** |  | 53d | 2021-01-01 | 2021-03-16 |  | 0d |  |  | 1104h | 17,940 |
| 80 | 5.1.1 | Dizajniranje izgleda |  | 30d | 2021-01-01 | 2021-02-11 |  | 0d |  | ETF Expert 1; ETF Researcher 1 [50%]; UPC Administration 1 | 600h | 8,475 |
| 81 | 5.1.2 | UML projektovanje |  | 17d | 2021-02-12 | 2021-03-08 | 80 | 0d |  | ETF Expert 1; SL Research 1; ELATEC Expert 7 | 408h | 7,905 |
| 82 | 5.1.3 | Dokumentovanje aktivnosti |  | 6d | 2021-03-09 | 2021-03-16 | 81 | 0d |  | ELATEC Expert 7; ETF Manager 5 | 96h | 1,560 |
| 83 | 5.2 | **Modelovanje i dizajn hardvera** |  | 48d | 2021-03-17 | 2021-05-21 | 79 | 0d |  |  | 1020h | 18,232.5 |
| 84 | 5.2.1 | Dizajniranje hardvera |  | 25d | 2021-03-17 | 2021-04-20 |  | 0d |  | ETF Expert 2; SL Expert 1 [50%]; UPC Expert 1; ELATEC Technician 1 | 700h | 12,562.5 |
| 85 | 5.2.2 | UML projektovanje |  | 17d | 2021-04-21 | 2021-05-13 | 84 | 0d |  | ETF Expert 1; SL Expert 1 [50%]; SL Research 1 [50%] | 272h | 5,100 |
| 86 | 5.2.3 | Dokumentovanje aktivnosti |  | 6d | 2021-05-14 | 2021-05-21 | 85 | 0d |  | ETF Manager 1 | 48h | 570 |
| 87 | 5.3 | Detaljan opis dizajna i arhitekture sistema |  | 4d | 2021-05-24 | 2021-05-27 | 83 | 0d |  | ELATEC Technician 1; SL Technician 1 | 64h | 1,480 |
| 88 | 6 | M3 - Završeno modelovanje sistema | milestone | 0d | 2021-05-27 | 2021-05-27 | 78 | 0d |  | ETF Manager 1 |  |  |
| 89 | 7 | **WP4 - Izrada prototipa veb-portala** |  | 61d | 2021-05-28 | 2021-08-20 | 88 | 32d | 0d |  | 1264h | 25,470 |
| 90 | 7.1 | **Izrada prototipa** |  | 41d | 2021-05-28 | 2021-07-23 |  | 32d | 0d |  | 824h | 16,470 |
| 91 | 7.1.1 | Izrada stranice za korisnike |  | 21d | 2021-05-28 | 2021-06-25 |  | 32d | 0d | SL Expert 1; UPC Expert 6; IOM Technician 1 | 504h | 9,870 |
| 92 | 7.1.2 | Izrada stranica za operatere |  | 15d | 2021-06-28 | 2021-07-16 | 91 | 32d | 0d | SL Expert 1 [50%]; SL Technician 1 [50%]; IOM Researcher 2 | 240h | 4,950 |
| 93 | 7.1.3 | Integracija stranica za korisnike i operatere |  | 5d | 2021-07-19 | 2021-07-23 | 92 | 32d |  | IOM Researcher 5; SL Technician 1 | 80h | 1,650 |
| 94 | 7.2 | Validacija prototipa |  | 15d | 2021-07-26 | 2021-08-13 | 90 | 32d | 0d | SL Research 1; UPC Administration 1; UPC Research 1 | 360h | 7,275 |
| 95 | 7.3 | Dokumentovanje aktivnosti |  | 5d | 2021-08-16 | 2021-08-20 | 94 | 32d |  | UPC Administration 1; SL Technician 1 | 80h | 1,725 |
| 96 | 8 | M4 - Završen prototip veb-portala | milestone | 0d | 2021-08-20 | 2021-08-20 | 89 | 32d | 0d | UPC Administration 1 |  |  |
| 97 | 9 | **WP5 - Izrada prototipa hardvera** |  | 87d | 2021-05-28 | 2021-09-27 | 88 | 0d |  | ETF Computer room; ETF Hardware equipment; ETF Licence for Statistical Analysis Software; ETF License of Software; External help with hardware development; ELATEC License for Software; ELATEC License for Testing Software | 1712h | 83,227 |
| 98 | 9.1 | **Izrada prototipa** |  | 65d | 2021-05-28 | 2021-08-26 |  | 0d |  |  | 1380h | 25,312.5 |
| 99 | 9.1.1 | Izrada prototipa RFID kartice |  | 30d | 2021-05-28 | 2021-07-08 |  | 0d |  | ETF Expert 2 [50%]; ETF Researcher 2 [50%]; ELATEC Researcher 1 [50%]; ETF Technician 4 [50%]; SL Expert 7 | 720h | 12,900 |
| 100 | 9.1.2 | Izrada čitača i upisivača |  | 25d | 2021-07-09 | 2021-08-12 | 99 | 0d |  | ETF Expert 1; SL Administration 1 [50%]; ELATEC Expert 10 | 500h | 9,062.5 |
| 101 | 9.1.3 | Integracija prototipa sa čitačima i upisivačima |  | 10d | 2021-08-13 | 2021-08-26 | 100 | 0d |  | ETF Researcher 2 [50%]; ELATEC Technician 5 [50%]; SL Technician 5 | 160h | 3,350 |
| 102 | 9.2 | Validacija prototipa |  | 17d | 2021-08-27 | 2021-09-20 | 98 | 0d |  | SL Technician 1; ELATEC Technician 5 | 272h | 6,290 |
| 103 | 9.3 | Dokumentovanje aktivnosti |  | 5d | 2021-09-21 | 2021-09-27 | 102 | 0d |  | ETF Manager 1; ELATEC Expert 4 [50%] | 60h | 887.5 |
| 104 | 10 | M5 - Završen prototip kartice | milestone | 0d | 2021-09-27 | 2021-09-27 | 97 | 0d |  | ETF Manager 1 |  |  |

| ID | WBS | Task | Type | Duration | Start | Finish | Predecessors | Total slack | Free slack | Resources | Work | Cost |
| --- | --- | --- | --- | --- | --- | --- | --- | --- | --- | --- | --- | --- |
| 105 | 11 | **WP6 - Implementacija hardvera** |  | 170d | 2021-09-28 | 2022-05-23 | 104 | 0d |  | ELATEC Server room | 7940h | 139,750 |
| 106 | 11.1 | Izrada čitača i upisivača |  | 20d | 2021-09-28 | 2021-10-25 |  | 0d |  | ELATEC Expert 5 [50%]; ELATEC Researcher 1 [50%]; SL Expert 7 [50%]; UPC Expert 4 | 400h | 8,150 |
| 107 | 11.2 | Izrada kartice |  | 40d | 2021-10-26 | 2021-12-20 | 106 | 0d |  | ELATEC Technician 1; SL Expert 4 [50%]; SL Technician 2 [50%]; SL Technician 7 [50%]; UPC Expert 3; UPC Technician 4 | 1440h | 30,100 |
| 108 | 11.3 | Implementacija biznis logike |  | 30d | 2021-12-21 | 2022-01-31 | 107 | 0d |  | ELATEC Expert 3; ELATEC Technician 2; SL Expert 5; SL Technician 4 [50%]; SL Technician 6 [50%]; UPC Expert 3 | 1200h | 26,400 |
| 109 | 11.4 | Implementacija bezbednosnih protokola |  | 35d | 2022-02-01 | 2022-03-21 | 108 | 0d |  | ELATEC Expert 4; ELATEC Expert 6 [50%]; ELATEC Expert 8 [50%]; ELATEC Technician 2 [50%]; SL Expert 4 [50%]; SL Expert 5 [50%]; SL Technician 4 [50%]; UPC Expert 4 [50%]; UPC Technician 3 [50%]; UPC Technician 5 [50%] | 1540h | 32,550 |
| 110 | 11.5 | **Integracija** |  | 40d | 2022-03-22 | 2022-05-16 | 109 | 0d |  |  | 1920h | 40,700 |
| 111 | 11.5.1 | Integracija kartice, čitača i upisivača |  | 20d | 2022-03-22 | 2022-04-18 | 108 | 0d |  | ELATEC Expert 7 [50%]; ELATEC Technician 5 [50%]; SL Expert 1 [50%]; SL Expert 2 [50%]; SL Technician 3 [50%]; UPC Expert 2; UPC Technician 2 | 720h | 15,050 |
| 112 | 11.5.2 | Integracija kartice i sigurnosnih protokola |  | 20d | 2022-04-19 | 2022-05-16 | 111 | 0d |  | ELATEC Expert 1 [50%]; ELATEC Expert 2 [50%]; ELATEC Technician 1 [50%]; SL Expert 1 [50%]; SL Expert 2 [50%]; SL Expert 3 [50%]; SL Technician 1 [50%]; SL Technician 2 [50%]; SL Technician 3 [50%]; UPC Research 1; UPC Technician 1; UPC Technician 2 | 1200h | 25,650 |
| 113 | 11.6 | Dokumentacija svih aktivnosti |  | 5d | 2022-05-17 | 2022-05-23 | 110 | 0d |  | ELATEC Administration 1; SL Administration 1 | 80h | 1,850 |
| 114 | 12 | M6 - Završena implementacija kartice | milestone | 0d | 2022-05-23 | 2022-05-23 | 105 | 0d |  | ELATEC Administration 1 |  |  |
| 115 | 13 | **WP7 - Implementacija veb-portala** |  | 145d | 2021-08-23 | 2022-03-11 | 96 | 32d | 0d |  | 4500h | 75,662.5 |
| 116 | 13.1 | Implementacija frontenda |  | 45d | 2021-08-23 | 2021-10-22 |  | 32d | 0d | ETF Technician 1 [50%]; IOM Technician 1; SL Technician 2 [50%]; IOM Researcher 5; SL Expert 1 [50%]; UNHCR Technician 1 | 1620h | 28,912.5 |
| 117 | 13.2 | Implementacija backenda |  | 45d | 2021-10-25 | 2021-12-24 | 116 | 32d | 0d | ETF Expert 4 [50%]; ETF Expert 5 [50%]; ETF Technician 3 [50%]; UNHCR Technician 1 | 900h | 12,712.5 |
| 118 | 13.3 | Implementacija bezbednosnih protokola |  | 35d | 2021-12-27 | 2022-02-11 | 117 | 52d |  | ETF Expert 6 [50%]; ETF Technician 5; ETF Technician 6 | 700h | 8,312.5 |
| 119 | 13.4 | **Integracija** |  | 45d | 2021-12-27 | 2022-02-25 |  | 32d | 0d |  | 1120h | 22,725 |
| 120 | 13.4.1 | Integracija frontenda i bekenda |  | 25d | 2021-12-27 | 2022-01-28 | 117 | 32d | 0d | SL Expert 2; SL Technician 1 [50%]; ETF Expert 1 [50%]; ETF Expert 2 [50%]; SL Expert 1 [50%]; UNHCR Technician 1 | 800h | 16,125 |
| 121 | 13.4.2 | Integracija sa bezbednosnim protokolima |  | 20d | 2022-01-31 | 2022-02-25 | 120 | 32d |  | SL Technician 7; IOM Administration 1 | 320h | 6,600 |
| 122 | 13.5 | Dokumentacija svih aktivnosti |  | 10d | 2022-02-28 | 2022-03-11 | 119 | 32d |  | ETF Manager 1; SL Administration 1 | 160h | 3,000 |
| 123 | 14 | M7 - Završena implementacija veb-portala | milestone | 0d | 2022-03-11 | 2022-03-11 | 115 | 32d | 0d | ETF Manager 1 |  |  |
| 124 | 15 | **WP8 - Testiranje hardvera** |  | 66d | 2022-05-24 | 2022-08-23 | 114 | 0d |  | External help with hardware security testing | 1168h | 20,665 |
| 125 | 15.1 | Pisanje testova |  | 10d | 2022-05-24 | 2022-06-06 |  | 0d |  | UPC Expert 1 [50%]; UPC Technician 1 | 120h | 2,100 |
| 126 | 15.2 | Pokretanje testova |  | 20d | 2022-06-07 | 2022-07-04 | 125 | 0d |  | ETF Expert 1; UPC Expert 1 [50%]; IOM Technician 1 | 400h | 5,800 |
| 127 | 15.3 | Ispravljanje pronađenih defekata |  | 30d | 2022-07-05 | 2022-08-15 | 126 | 0d |  | UPC Technician 1; ETF Expert 1; IOM Technician 1 [50%] | 600h | 8,925 |
| 128 | 15.4 | Kreiranje izveštaja |  | 6d | 2022-08-16 | 2022-08-23 | 127 | 0d |  | UPC Administration 1 | 48h | 840 |
| 129 | 16 | M8 - Završeno testiranje hardvera | milestone | 0d | 2022-08-23 | 2022-08-23 | 124 | 110d |  | UPC Administration 1 |  |  |

| ID | WBS | Task | Type | Duration | Start | Finish | Predecessors | Total slack | Free slack | Resources | Work | Cost |
| --- | --- | --- | --- | --- | --- | --- | --- | --- | --- | --- | --- | --- |
| 130 | 17 | **WP9 - Testiranje softvera** |  | 85d | 2022-03-14 | 2022-07-08 | 123 | 32d | 0d | ETF License for Testing Software; ETF Testing equipment; External help with software security testing | 1020h | 22,470 |
| 131 | 17.1 | Pisanje testova |  | 15d | 2022-03-14 | 2022-04-01 |  | 32d | 0d | UNHCR Administration 1; UPC Expert 6 | 240h | 4,200 |
| 132 | 17.2 | Pokretanje testova |  | 25d | 2022-04-04 | 2022-05-06 | 131 | 32d | 0d | ETF Technician 1 | 200h | 2,375 |
| 133 | 17.3 | Ispravljanje pronađenih defekata |  | 35d | 2022-05-09 | 2022-06-24 | 132 | 32d | 0d | UNHCR Technician 1 [50%]; UNHCR Technician 2 [50%]; UNHCR Expert 1 | 420h | 7,350 |
| 134 | 17.4 | Kreiranje izveštaja |  | 10d | 2022-06-27 | 2022-07-08 | 133 | 32d |  | ETF Manager 1; UPC Administration 1 | 160h | 2,350 |
| 135 | 18 | M9 - Završeno testiranje softvera | milestone | 0d | 2022-07-08 | 2022-07-08 | 130 | 32d |  | UNHCR Administration 1 |  |  |
| 136 | 19 | **WP10 - Evaluacija i disiminacija** |  | 110d | 2022-08-24 | 2023-01-24 | 135, 124 | 0d |  | ETF Advertisment material; ETF Conferency Entry Passes; Advertisment videos | 3040h | 63,300 |
| 137 | 19.1 | Prikupljanje utisaka korisnika |  | 20d | 2022-08-24 | 2022-09-20 |  | 0d |  | ETF Manager 1 [50%]; ETF Researcher 1 [50%]; IOM Researcher 1 [50%]; UNHCR Researcher 1 | 400h | 5,950 |
| 138 | 19.2 | Kreiranje marketinškog plana |  | 10d | 2022-09-21 | 2022-10-04 | 137 | 0d |  | IOM Administration 1; IOM Researcher 1 | 160h | 2,500 |
| 139 | 19.3 | Priprema reklamnog materijala |  | 15d | 2022-10-05 | 2022-10-25 | 138 | 0d |  | UNHCR Researcher 1 [50%]; UNHCR Researcher 2 [50%] | 120h | 2,100 |
| 140 | 19.4 | **Promovisanje proizvoda** |  | 55d | 2022-10-26 | 2023-01-10 | 139 | 0d |  |  | 2200h | 33,550 |
| 141 | 19.4.1 | Internet marketing |  | 55d | 2022-10-26 | 2023-01-10 |  | 0d |  | ETF Researcher 1 [50%]; IOM Researcher 3 [50%] | 440h | 6,050 |
| 142 | 19.4.2 | TV marketing |  | 55d | 2022-10-26 | 2023-01-10 |  | 0d |  | ETF Technician 1; UNHCR Administration 1 [50%]; UNHCR Researcher 3 [50%] | 880h | 12,925 |
| 143 | 19.4.3 | Učestvovanje na sajmovima i konferencijama |  | 55d | 2022-10-26 | 2023-01-10 |  | 0d |  | UNHCR Researcher 1; IOM Researcher 1 | 880h | 14,575 |
| 144 | 19.5 | Izveštaji i analizirane statistike |  | 10d | 2023-01-11 | 2023-01-24 | 140 | 0d |  | ETF Manager 1; IOM Administration 1 | 160h | 2,200 |
| 145 | 20 | M10 - Završena evaluacija i disiminacija | milestone | 0d | 2023-01-24 | 2023-01-24 | 136 | 0d |  | IOM Administration 1 |  |  |
| 146 | 21 | **WP11 - Upravljanje projektom** |  | 712d | 2020-05-04 | 2023-01-24 | 1SS | 0d |  | ETF Licence for Statistical Analysis Software; ETF License for Microsoft Project; ETF License for Project Planning Software; ELATEC Travel expenses; ETF Travel expenses; IOM Travel expenses; SL Travel expenses; UNHCR Travel expenses; UPC Travel expenses; IOM Equipment expenses; SL Equipment expenses; UNHCR Equipment expenses; UPC Equipment expenses; IOM Subcontracting; SL Subcontracting; UNHCR Subcontracting; UPC Subcontracting | 5295.6h | 571,925.25 |
| 147 | 21.1 | Uspravljanje rizicima |  | 711d | 2020-05-04 | 2023-01-23 | 1SS | 1d |  | ETF Manager 2 [15%] | 853.2h | 10,131.75 |
| 148 | 21.2 | Upravljanje komunikacijom |  | 711d | 2020-05-04 | 2023-01-23 | 1SS | 1d |  | ETF Manager 3 [15%] | 853.2h | 10,131.75 |
| 149 | 21.3 | Upravljanje merama kvaliteta i postupcima |  | 711d | 2020-05-04 | 2023-01-23 | 1SS | 1d |  | ETF Manager 4 [15%] | 853.2h | 10,131.75 |
| 150 | 21.4 | Upravljanje obimom posla |  | 173d | 2020-05-05 | 2020-12-31 | 58FF | 538d |  | ETF Manager 5 [15%] | 207.6h | 2,465.25 |
| 151 | 21.5 | Upravljanje vremenom |  | 173d | 2020-05-05 | 2020-12-31 | 58FF | 538d |  | ETF Manager 6 [15%] | 207.6h | 2,465.25 |
| 152 | 21.6 | Upravljanje rashodima |  | 107d | 2020-08-05 | 2020-12-31 | 58FF | 538d |  | ETF Manager 7 [15%] | 128.4h | 1,524.75 |
| 153 | 21.7 | Upravljanje ljudskim resursima |  | 107d | 2020-08-05 | 2020-12-31 | 58FF | 538d |  | ETF Manager 8 [15%] | 128.4h | 1,524.75 |

| ID | WBS | Task | Type | Duration | Start | Finish | Predecessors | Total slack | Constraint | Resources | Work | Cost |
| --- | --- | --- | --- | --- | --- | --- | --- | --- | --- | --- | --- | --- |
| 154 | 21.8 | **Sastanci** |  | 699d | 2020-05-04 | 2023-01-05 |  | 13d |  |  | 1584h | 28,710 |
| 155 | 21.8.1 | **Mesečni sastanak** |  | 699d | 2020-05-04 | 2023-01-05 |  | 13d |  |  | 1584h | 28,710 |
| 156 | 21.8.1.1 | Mesečni sastanak 1 |  | 1d | 2020-05-04 | 2020-05-04 |  | 711d | start no earlier than 2019-05-01 | ELATEC Administration 0; ETF Manager 0; IOM Administration 0; SL Administration 0; UNHCR Administration 0; UPC Administration 0 | 48h | 870 |
| 157 | 21.8.1.2 | Mesečni sastanak 2 |  | 1d | 2020-06-04 | 2020-06-04 |  | 688d | start no earlier than 2020-06-04 | ELATEC Administration 0; ETF Manager 0; IOM Administration 0; SL Administration 0; UNHCR Administration 0; UPC Administration 0 | 48h | 870 |
| 158 | 21.8.1.3 | Mesečni sastanak 3 |  | 1d | 2020-07-06 | 2020-07-06 |  | 666d | start no earlier than 2020-07-06 | ELATEC Administration 0; ETF Manager 0; IOM Administration 0; SL Administration 0; UNHCR Administration 0; UPC Administration 0 | 48h | 870 |
| 159 | 21.8.1.4 | Mesečni sastanak 4 |  | 1d | 2020-08-04 | 2020-08-04 |  | 645d | start no earlier than 2020-08-04 | ELATEC Administration 0; ETF Manager 0; IOM Administration 0; SL Administration 0; UNHCR Administration 0; UPC Administration 0 | 48h | 870 |
| 160 | 21.8.1.5 | Mesečni sastanak 5 |  | 1d | 2020-09-04 | 2020-09-04 |  | 622d | start no earlier than 2020-09-04 | ELATEC Administration 0; ETF Manager 0; IOM Administration 0; SL Administration 0; UNHCR Administration 0; UPC Administration 0 | 48h | 870 |
| 161 | 21.8.1.6 | Mesečni sastanak 6 |  | 1d | 2020-10-05 | 2020-10-05 |  | 601d | start no earlier than 2020-10-05 | ELATEC Administration 0; ETF Manager 0; IOM Administration 0; SL Administration 0; UNHCR Administration 0; UPC Administration 0 | 48h | 870 |
| 162 | 21.8.1.7 | Mesečni sastanak 7 |  | 1d | 2020-11-04 | 2020-11-04 |  | 579d | start no earlier than 2020-11-04 | ELATEC Administration 0; ETF Manager 0; IOM Administration 0; SL Administration 0; UNHCR Administration 0; UPC Administration 0 | 48h | 870 |
| 163 | 21.8.1.8 | Mesečni sastanak 8 |  | 1d | 2020-12-04 | 2020-12-04 |  | 557d | start no earlier than 2020-12-04 | ELATEC Administration 0; ETF Manager 0; IOM Administration 0; SL Administration 0; UNHCR Administration 0; UPC Administration 0 | 48h | 870 |
| 164 | 21.8.1.9 | Mesečni sastanak 9 |  | 1d | 2021-01-04 | 2021-01-04 |  | 536d | start no earlier than 2021-01-04 | ELATEC Administration 0; ETF Manager 0; IOM Administration 0; SL Administration 0; UNHCR Administration 0; UPC Administration 0 | 48h | 870 |
| 165 | 21.8.1.10 | Mesečni sastanak 10 |  | 1d | 2021-02-04 | 2021-02-04 |  | 513d | start no earlier than 2021-02-04 | ELATEC Administration 0; ETF Manager 0; IOM Administration 0; SL Administration 0; UNHCR Administration 0; UPC Administration 0 | 48h | 870 |
| 166 | 21.8.1.11 | Mesečni sastanak 11 |  | 1d | 2021-03-04 | 2021-03-04 |  | 493d | start no earlier than 2021-03-04 | ELATEC Administration 0; ETF Manager 0; IOM Administration 0; SL Administration 0; UNHCR Administration 0; UPC Administration 0 | 48h | 870 |
| 167 | 21.8.1.12 | Mesečni sastanak 12 |  | 1d | 2021-04-05 | 2021-04-05 |  | 471d | start no earlier than 2021-04-05 | ELATEC Administration 0; ETF Manager 0; IOM Administration 0; SL Administration 0; UNHCR Administration 0; UPC Administration 0 | 48h | 870 |
| 168 | 21.8.1.13 | Mesečni sastanak 13 |  | 1d | 2021-05-04 | 2021-05-04 |  | 450d | start no earlier than 2021-05-04 | ELATEC Administration 0; ETF Manager 0; IOM Administration 0; SL Administration 0; UNHCR Administration 0; UPC Administration 0 | 48h | 870 |
| 169 | 21.8.1.14 | Mesečni sastanak 14 |  | 1d | 2021-06-04 | 2021-06-04 |  | 427d | start no earlier than 2021-06-04 | ELATEC Administration 0; ETF Manager 0; IOM Administration 0; SL Administration 0; UNHCR Administration 0; UPC Administration 0 | 48h | 870 |
| 170 | 21.8.1.15 | Mesečni sastanak 15 |  | 1d | 2021-07-05 | 2021-07-05 |  | 406d | start no earlier than 2021-07-05 | ELATEC Administration 0; ETF Manager 0; IOM Administration 0; SL Administration 0; UNHCR Administration 0; UPC Administration 0 | 48h | 870 |
| 171 | 21.8.1.16 | Mesečni sastanak 16 |  | 1d | 2021-08-04 | 2021-08-04 |  | 384d | start no earlier than 2021-08-04 | ELATEC Administration 0; ETF Manager 0; IOM Administration 0; SL Administration 0; UNHCR Administration 0; UPC Administration 0 | 48h | 870 |
| 172 | 21.8.1.17 | Mesečni sastanak 17 |  | 1d | 2021-09-06 | 2021-09-06 |  | 361d | start no earlier than 2021-09-06 | ELATEC Administration 0; ETF Manager 0; IOM Administration 0; SL Administration 0; UNHCR Administration 0; UPC Administration 0 | 48h | 870 |
| 173 | 21.8.1.18 | Mesečni sastanak 18 |  | 1d | 2021-10-04 | 2021-10-04 |  | 341d | start no earlier than 2021-10-04 | ELATEC Administration 0; ETF Manager 0; IOM Administration 0; SL Administration 0; UNHCR Administration 0; UPC Administration 0 | 48h | 870 |
| 174 | 21.8.1.19 | Mesečni sastanak 19 |  | 1d | 2021-11-04 | 2021-11-04 |  | 318d | start no earlier than 2021-11-04 | ELATEC Administration 0; ETF Manager 0; IOM Administration 0; SL Administration 0; UNHCR Administration 0; UPC Administration 0 | 48h | 870 |
| 175 | 21.8.1.20 | Mesečni sastanak 20 |  | 1d | 2021-12-06 | 2021-12-06 |  | 296d | start no earlier than 2021-12-06 | ELATEC Administration 0; ETF Manager 0; IOM Administration 0; SL Administration 0; UNHCR Administration 0; UPC Administration 0 | 48h | 870 |
| 176 | 21.8.1.21 | Mesečni sastanak 21 |  | 1d | 2022-01-04 | 2022-01-04 |  | 275d | start no earlier than 2022-01-04 | ELATEC Administration 0; ETF Manager 0; IOM Administration 0; SL Administration 0; UNHCR Administration 0; UPC Administration 0 | 48h | 870 |
| 177 | 21.8.1.22 | Mesečni sastanak 22 |  | 1d | 2022-02-04 | 2022-02-04 |  | 252d | start no earlier than 2022-02-04 | ELATEC Administration 0; ETF Manager 0; IOM Administration 0; SL Administration 0; UNHCR Administration 0; UPC Administration 0 | 48h | 870 |
| 178 | 21.8.1.23 | Mesečni sastanak 23 |  | 1d | 2022-03-04 | 2022-03-04 |  | 232d | start no earlier than 2022-03-04 | ELATEC Administration 0; ETF Manager 0; IOM Administration 0; SL Administration 0; UNHCR Administration 0; UPC Administration 0 | 48h | 870 |
| 179 | 21.8.1.24 | Mesečni sastanak 24 |  | 1d | 2022-04-04 | 2022-04-04 |  | 211d | start no earlier than 2022-04-04 | ELATEC Administration 0; ETF Manager 0; IOM Administration 0; SL Administration 0; UNHCR Administration 0; UPC Administration 0 | 48h | 870 |
| 180 | 21.8.1.25 | Mesečni sastanak 25 |  | 1d | 2022-05-04 | 2022-05-04 |  | 189d | start no earlier than 2022-05-04 | ELATEC Administration 0; ETF Manager 0; IOM Administration 0; SL Administration 0; UNHCR Administration 0; UPC Administration 0 | 48h | 870 |
| 181 | 21.8.1.26 | Mesečni sastanak 26 |  | 1d | 2022-06-06 | 2022-06-06 |  | 166d | start no earlier than 2022-06-06 | ELATEC Administration 0; ETF Manager 0; IOM Administration 0; SL Administration 0; UNHCR Administration 0; UPC Administration 0 | 48h | 870 |
| 182 | 21.8.1.27 | Mesečni sastanak 27 |  | 1d | 2022-07-04 | 2022-07-04 |  | 146d | start no earlier than 2022-07-04 | ELATEC Administration 0; ETF Manager 0; IOM Administration 0; SL Administration 0; UNHCR Administration 0; UPC Administration 0 | 48h | 870 |
| 183 | 21.8.1.28 | Mesečni sastanak 28 |  | 1d | 2022-08-04 | 2022-08-04 |  | 123d | start no earlier than 2022-08-04 | ELATEC Administration 0; ETF Manager 0; IOM Administration 0; SL Administration 0; UNHCR Administration 0; UPC Administration 0 | 48h | 870 |
| 184 | 21.8.1.29 | Mesečni sastanak 29 |  | 1d | 2022-09-05 | 2022-09-05 |  | 101d | start no earlier than 2022-09-05 | ELATEC Administration 0; ETF Manager 0; IOM Administration 0; SL Administration 0; UNHCR Administration 0; UPC Administration 0 | 48h | 870 |
| 185 | 21.8.1.30 | Mesečni sastanak 30 |  | 1d | 2022-10-04 | 2022-10-04 |  | 80d | start no earlier than 2022-10-04 | ELATEC Administration 0; ETF Manager 0; IOM Administration 0; SL Administration 0; UNHCR Administration 0; UPC Administration 0 | 48h | 870 |
| 186 | 21.8.1.31 | Mesečni sastanak 31 |  | 1d | 2022-11-04 | 2022-11-04 |  | 57d | start no earlier than 2022-11-04 | ELATEC Administration 0; ETF Manager 0; IOM Administration 0; SL Administration 0; UNHCR Administration 0; UPC Administration 0 | 48h | 870 |
| 187 | 21.8.1.32 | Mesečni sastanak 32 |  | 1d | 2022-12-05 | 2022-12-05 |  | 36d | start no earlier than 2022-12-05 | ELATEC Administration 0; ETF Manager 0; IOM Administration 0; SL Administration 0; UNHCR Administration 0; UPC Administration 0 | 48h | 870 |
| 188 | 21.8.1.33 | Mesečni sastanak 33 |  | 1d | 2023-01-05 | 2023-01-05 |  | 13d | start no earlier than 2023-01-05 | ELATEC Administration 0; ETF Manager 0; IOM Administration 0; SL Administration 0; UNHCR Administration 0; UPC Administration 0 | 48h | 870 |
| 189 | 21.9 | Zatvaranje projekta |  | 10d | 2023-01-11 | 2023-01-24 | 136FF | 0d |  | ELATEC Administration 0; ETF Manager 0; IOM Administration 0; SL Administration 0; UNHCR Administration 0; UPC Administration 0 | 480h | 8,700 |
| 190 | 22 | M11 - Završen projekat | milestone | 0d | 2023-01-24 | 2023-01-24 | 189 | 0d |  |  |  |  |
